How a schedule from an exported table changed from version to version. A marks actual dates.

## Version 1 (saved 2026-10-31)

Note of the change: Initial commit: Vietnam Commerce Case Competition 2026 unified stochastic & ML pipeline

| ID | Task | Start | Finish |
| --- | --- | --- | --- |
| T1.1 | Product Discovery, Segment Mapping & Operational Specs | W1.0 | W1.5 |
| T1.2 | System Architecture, ACID DB Schema & Redis Lock Design | W2.0 | W2.5 |
| T1.3 | OpenAPI 3.1 Contracts, UI/UX Design System & Gateway KYB | W2.5 | W3.5 |
| T2.1 | Cloud Infrastructure (IaC), PostgreSQL & Redis Provisioning | W4.0 | W4.5 |
| T2.2 | CI/CD Pipelines, Automated Test Harness & Observability | W4.5 | W5.0 |
| T2.3 | Auth Service, Phone/Zalo OTP & Role-Based Access (RBAC) | W5.0 | W5.5 |
| T3.1 | Real-Time Court Booking Engine & Redis Concurrency Locking | W6.0 | W8.0 |
| T3.2 | AdaptivePricing ML Engine Integration & Dynamic Tariff API | W7.5 | W9.0 |
| T3.3 | Payment Gateways (VietQR/PayOS/VNPay/MoMo) & F&B Pre-Order | W8.5 | W10.5 |
| T3.4 | PICK! Social Hub: Skill Rating, Open-Play Matching & Coaching | W9.5 | W12.0 |
| T3.5 | Admin Portal, Front-Desk QR Check-In & Financial Ledger | W11.5 | W13.0 |
| T3.6 | [Simultaneous QA] Continuous Unit, API Contract & Sprint Testing | W6.0 | W13.0 |
| T4.1 | End-to-End (E2E) Integration & Payment Gateway Certification | W14.0 | W14.5 |
| T4.2 | Peak Concurrency Load Testing (k6) & Security/PDPD Audit | W14.5 | W15.0 |
| T4.3 | Staff Training & Pilot User Acceptance Testing (UAT) | W15.5 | W16.0 |
| T5.1 | Legacy Data Audit, Cleansing & ETL (Zalo/Sheets to Postgres) | W17.0 | W17.5 |
| T5.2 | Parallel Shadow Run & Priority Cohort Soft Launch | W18.0 | W19.0 |
| T5.3 | Legacy Booking Cutover & 100% Self-Service Public Launch | W20.0 | W20.0 |
| T6.1 | Post-Launch Hypercare, SLA Monitoring & Hotfix Patching | W20.0 | W22.0 |
| T6.2 | User Telemetry Analysis, UX Tuning & ML Pricing Calibration | W21.5 | W24.0 |
| T6.3 | Continuous Feature Releases (Tournaments, Loyalty) & CI/CD | W22.0 | W24.0 |

## Version 2 (saved 2026-11-01)

Note of the change: Add quarterly seasonal tournaments with free member entry, non-member entry fees, organization COGS, and subscriber conversion boost

Changed:

| ID | Task | Other |
| --- | --- | --- |
| T3.4 | PICK! Social Hub: Skill Rating, Open-Play, Seasonal Tournaments & Coaching | was named PICK! Social Hub: Skill Rating, Open-Play Matching & Coaching |

## Version 3 (saved 2026-11-02)

Note of the change: Scale Balance Sheet working capital with 20-court operations and enhance visual hierarchy across all table renders

Changed:

| ID | Task | Other |
| --- | --- | --- |
| T3.2 | Adaptive Pricing ML Engine Integration & Dynamic Tariff API | was named AdaptivePricing ML Engine Integration & Dynamic Tariff API |

## Version 4 (saved 2026-11-02)

Note of the change: Complete README Sections 0-7, polish all 25 charts, and reconcile code-report audit

Changed:

| ID | Task | Other |
| --- | --- | --- |
| T2.3 | Auth Service, Phone SMS OTP & Role-Based Access (RBAC) | was named Auth Service, Phone/Zalo OTP & Role-Based Access (RBAC) |
| T5.1 | Legacy Data Audit, Cleansing & ETL (Legacy Sheets to Postgres) | was named Legacy Data Audit, Cleansing & ETL (Zalo/Sheets to Postgres) |
