How a schedule from an exported table changed from version to version. A marks actual dates.

## Version 1 (saved 2026-10-31)

Note of the change: Initial commit: Vietnam Commerce Case Competition 2026 unified stochastic & ML pipeline

| ID | Task | Start | Finish |
| --- | --- | --- | --- |
| V1.1 | Site Handover, Topographic Survey & 14-Court Master Layout | W1.0 | W1.5 |
| V1.2 | Acoustic Noise-Abatement Engineering & MEP/Lighting Blueprints | W1.5 | W2.0 |
| V1.3 | HCMC Construction Permit, Environmental & PCCC Fire Design Approval | W2.0 | W3.0 |
| V2.1 | Site Clearing, Sub-Base Compaction & Stormwater Drainage Grid | W3.5 | W4.5 |
| V2.2 | Laser-Graded Vapor Barrier & Post-Tensioned Concrete Slab Pour (14 Courts) | W5.0 | W6.0 |
| V2.3 | [Mandatory Physics Gate] 28-Day Concrete Moisture Cure & Stress-Relief | W5.5 | W8.5 |
| V3.1 | High-Clearance Insulated Roof Canopy & Louvered Monsoon Windscreens | W4.5 | W8.0 |
| V3.2 | 3-Phase Electrical Grid, HVAC Ventilation & 500-Lux Glare-Free LED Lighting | W6.5 | W9.5 |
| V3.3 | Specialty Cafe, Coaching Video-Analysis Studio & Locker/Shower Fit-Out | W7.5 | W11.5 |
| V4.1 | Slab Moisture Calcium-Chloride Testing, Diamond Grinding & Patch Leveling | W9.5 | W10.0 |
| V4.2 | Multi-Layer Cushioned Silica-Sand Acrylic Surfacing & Precision Line Striping | W11.0 | W13.0 |
| V4.3 | Perimeter Acoustic Noise Curtains, Court Divider Fencing & Net Systems | W12.5 | W14.0 |
| V5.1 | PCCC Fire Safety Final Inspection & Operating License Issuance | W14.0 | W14.5 |
| V5.2 | PICK! Social Platform, QR Turnstiles, Cafe POS & Automated Lighting Integration | W14.5 | W15.0 |
| V5.3 | Venue 2 Staff & Coach Recruitment, Training & 20-Court Grand Opening Tournament | W15.5 | W16.0 |
| V6.1 | Phase 1 Fill-Up (Months 14–16: Feb 2028 – Apr 2028): Member Migration & Off-Peak Ramp | W17.0 | W28.0 |
| V6.2 | Phase 2 Fill-Up (Months 17–21: May 2028 – Sep 2028): Full 20-Court Steady-State Maturity | W29.0 | W48.0 |

## Version 2 (saved 2026-11-02)

Note of the change: Replace all non-ASCII symbols and punctuation with strict ASCII across code, configs, reports, and charts

Changed:

| ID | Task | Other |
| --- | --- | --- |
| V6.1 | Phase 1 Fill-Up (Months 14-16: Feb 2028 - Apr 2028): Member Migration & Off-Peak Ramp | was named Phase 1 Fill-Up (Months 14–16: Feb 2028 – Apr 2028): Member Migration & Off-Peak Ramp |
| V6.2 | Phase 2 Fill-Up (Months 17-21: May 2028 - Sep 2028): Full 20-Court Steady-State Maturity | was named Phase 2 Fill-Up (Months 17–21: May 2028 – Sep 2028): Full 20-Court Steady-State Maturity |

## Version 3 (saved 2026-11-02)

Note of the change: Complete README Sections 0-7, polish all 25 charts, and reconcile code-report audit

Changed:

| ID | Task | Other |
| --- | --- | --- |
| V2.3 | Mandatory 28-Day Concrete Drying & Curing Period | was named [Mandatory Physics Gate] 28-Day Concrete Moisture Cure & Stress-Relief |
